# Research-Site-Timeline-06-24-2013-v4

Schedule from MS Project, 2013-06-17 to 2013-11-05.
Information System

## Calendars

- Standard: Mon-Fri 08:00-12:00, 13:00-17:00; Sat-Sun off. Exceptions (off unless hours are given): 2008-12-25 to 2027-12-25 (Christmas Day, recurring), 2009-01-01 to 2028-01-01 (New Years Day, recurring), 2013-07-02 to 2013-07-06 (Independence Day), 2013-08-31 to 2013-09-02 (Labor Day).

## Resources

| Resource | Group |
| --- | --- |
| ND&P |  |
| ClearPathSolutions |  |
| Partners IS |  |
| Marketing Dept | Mass General Marketing |
| Research Dept | Mass General Research Dept |

## Schedule

| ID | WBS | Task | Type | Duration | Start | Finish | Predecessors | Total slack | Free slack | Constraint | Resources | Work |
| --- | --- | --- | --- | --- | --- | --- | --- | --- | --- | --- | --- | --- |
| 1 | 1 | **MGH Research Project** |  | 96.88d | 2013-06-17 | 2013-11-05 |  |  |  |  |  | 785.5h |
| 2 | 1.1 | **Third Party Development** |  | 25d | 2013-06-18 | 2013-07-29 |  | 0d |  |  |  | 120h |
| 3 | 1.1.1 | ND & P develop HTML & CSS - Templates |  | 15d | 2013-07-08 | 2013-07-29 |  | 1.88d | 0d | start no earlier than 2013-07-08 | ND&P | 120h |
| 4 | 1.1.2 | ClearPathSolutions - Update FAR tool | manual | 25d | 2013-06-18 | 2013-07-29 |  |  |  |  |  |  |
| 5 | 1.2 | **Partners IS** |  | 41d | 2013-07-01 | 2013-09-03 |  | 17d |  |  |  | 401.5h |
| 6 | 1.2.1 | Site Requirements & Functional Specs review |  | 12d | 2013-07-01 | 2013-07-23 |  | 74.75d |  | start no earlier than 2013-07-01 | Partners IS | 96h |
| 7 | 1.2.2 | Content Freeze on Staging |  | 5d | 2013-07-16 | 2013-07-23 |  | 74.75d |  | start no earlier than 2013-07-16 | Partners IS | 40h |
| 8 | 1.2.3 | Dev/Staging/ Live Configurations setup |  | 5d | 2013-07-23 | 2013-07-30 |  | 64.75d | 0d | start no earlier than 2013-07-23 | Partners IS [97.5%] | 39h |
| 9 | 1.2.4 | HTML/CSS file review (delivered by MGH - ND & P) |  | 3d | 2013-07-31 | 2013-08-02 | 3 | 0d |  | finish no earlier than 2013-08-02 | Partners IS [93.8%] | 22.5h |
| 10 | 1.2.5 | Create site analytics profiles |  | 0.5d | 2013-07-29 | 2013-07-29 | 3 | 70.25d |  |  | Marketing Dept | 4h |
| 11 | 1.2.6 | **Development (Partners IS)** |  | 19.88d | 2013-08-05 | 2013-08-30 |  |  |  |  |  | 200h |
| 12 | 1.2.6.1 | Teamsite cloning |  | 5d | 2013-07-30 | 2013-08-06 | 8 | 64.75d |  | start no earlier than 2013-06-17 | Partners IS | 40h |
| 13 | 1.2.6.2 | Teamsite configuration |  | 20d | 2013-08-05 | 2013-09-03 | 9 | -0.12d | 0d |  | Partners IS | 160h |
| 14 | 1.3 | **Research Content Migration** |  | 45d | 2013-07-22 | 2013-09-24 |  | 0d |  |  |  |  |
| 15 | 1.3.1 | Content Creation / Review (in Word) | manual | 30d | 2013-07-22 | 2013-09-03 |  |  |  |  |  |  |
| 16 | 1.3.2 | Content Migration into Teamsite |  | 15d | 2013-09-03 | 2013-09-24 | 15, 13 | 30.75d |  |  |  |  |
| 17 | 1.4 | **QA** |  | 38d | 2013-09-06 | 2013-10-30 |  | 3.75d |  |  |  | 264h |
| 18 | 1.4.1 | **QA - 1 - Marketing Internal** |  | 20d | 2013-09-06 | 2013-10-04 |  | 3.75d |  |  |  | 120h |
| 19 | 1.4.1.1 | QA by Marketing Dept |  | 7d | 2013-09-06 | 2013-09-17 | 13FS+3d | 3.75d | 0d |  | Marketing Dept | 56h |
| 20 | 1.4.1.2 | Veracode Test (Partners & third party tests) |  | 2d | 2013-09-17 | 2013-09-19 | 19 | 3.75d | 0d |  | Marketing Dept | 16h |
| 21 | 1.4.1.3 | Site & Template revisions by Partners IS |  | 3d | 2013-09-19 | 2013-09-24 | 20, 19 | 3.75d | 0d |  | Partners IS | 24h |
| 22 | 1.4.1.4 | **QA - 1.1 - Marketing Internal** |  | 8d | 2013-09-24 | 2013-10-04 |  | 3.75d |  |  |  | 24h |
| 23 | 1.4.1.4.1 | QA by Marketing Dept |  | 5d | 2013-09-24 | 2013-10-01 | 21 | 3.75d | 0d |  |  |  |
| 24 | 1.4.1.4.2 | Site & Template revisions by Parnters IS |  | 3d | 2013-10-01 | 2013-10-04 | 23 | 3.75d | 0d |  | Partners IS | 24h |

| ID | WBS | Task | Type | Duration | Start | Finish | Predecessors | Total slack | Free slack | Resources | Work |
| --- | --- | --- | --- | --- | --- | --- | --- | --- | --- | --- | --- |
| 25 | 1.4.2 | **QA - 2 - Research** |  | 16d | 2013-10-04 | 2013-10-28 |  | 3.75d |  |  | 128h |
| 26 | 1.4.2.1 | QA by Research |  | 5d | 2013-10-04 | 2013-10-11 | 24 | 3.75d | 0d | Marketing Dept | 40h |
| 27 | 1.4.2.2 | Site Revisions |  | 3d | 2013-10-11 | 2013-10-16 | 26 | 3.75d | 0d | Partners IS | 24h |
| 28 | 1.4.2.3 | **QA - 2.1 - Research & Marketing** |  | 8d | 2013-10-16 | 2013-10-28 |  | 3.75d |  |  | 64h |
| 29 | 1.4.2.3.1 | QA by Research & Marketing |  | 5d | 2013-10-16 | 2013-10-23 | 27 | 3.75d | 0d | Marketing Dept | 40h |
| 30 | 1.4.2.3.2 | Site Revisions |  | 3d | 2013-10-23 | 2013-10-28 | 29 | 3.75d | 0d | Partners IS | 24h |
| 31 | 1.4.3 | **Launch approval** |  | 2d | 2013-10-28 | 2013-10-30 |  | 3.75d | 0d |  | 16h |
| 32 | 1.4.3.1 | Marketing Dept sign off |  | 1d | 2013-10-28 | 2013-10-29 | 30 | 3.75d | 0d | Marketing Dept | 8h |
| 33 | 1.4.3.2 | Research Dept sign off |  | 1d | 2013-10-29 | 2013-10-30 | 32 | 3.75d |  | Research Dept | 8h |
| 34 | 2 | Launch | milestone | 1d | 2013-10-30 | 2013-10-31 | 31 | 3.75d |  | Partners IS | 8h |
